task_id,site,task,sub_id,planned_start,planned_finish,depends_on,pct_complete,status
A1,J-2611,厨房电线收尾,SC-ELEC,2026-11-09,2026-11-10,,90,in_progress
A2,J-2611,厨房石膏板,SC-PLAS,2026-11-11,2026-11-13,A1,0,not_started
A3,J-2611,厨房橱柜安装,SC-CAB,2026-11-16,2026-11-18,A2,0,not_started
A4,J-2611,主浴室贴砖,SC-TILE,2026-11-09,2026-11-13,,40,in_progress
A5,J-2611,主浴室洁具安装,SC-PLUM,2026-11-16,2026-11-17,A4,0,not_started
A6,J-2611,全屋刷漆,SC-PAINT,2026-11-19,2026-11-25,A3;A5,0,not_started
B1,J-2614,加建房框架,SC-CARP,2026-11-02,2026-11-13,,60,in_progress
B2,J-2614,框架验收,BS-01,2026-11-16,2026-11-16,B1,0,booked
B3,J-2614,加建房石膏板,SC-PLAS,2026-11-17,2026-11-20,B2,0,not_started
C1,J-2616,浴室水管粗装,SC-PLUM,2026-11-10,2026-11-12,,70,in_progress
C2,J-2616,浴室防水,SC-WP,2026-11-13,2026-11-16,C1,0,not_started
C3,J-2616,浴室贴砖,SC-TILE,2026-11-17,2026-11-23,C2,0,not_started
